# Sunny-Jim

Schedule from MS Project XML, 2021-06-22 to 2021-10-11, A marks actual dates.

## Calendars

- Standard[Imported]: Mon-Fri 08:00-12:00, 13:00-17:00; Sat-Sun off.

## Resources

| Resource |
| --- |
| Unassigned |
| Peter |
| George |
| External |

## Schedule

| ID | WBS | Task | Type | Duration | Start | Finish | Predecessors | Complete | Remaining | Total slack | Free slack | Constraint | Resources | Work | Actual work |
| --- | --- | --- | --- | --- | --- | --- | --- | --- | --- | --- | --- | --- | --- | --- | --- |
| 1 | 1 | **External milestones** |  | 29d | 2021-06-22 | 2021-07-30 |  |  |  | 29.88d |  |  |  | 464h |  |
| 2 | 1.1 | Motor Arrives |  | 29d | 2021-06-22 | 2021-07-30 |  |  |  | 29.88d | 0d |  | External | 232h |  |
| 3 | 1.2 | VCU Arrives |  | 29d | 2021-06-22 | 2021-07-30 |  |  |  | 45.88d | 0d |  | External | 232h |  |
| 4 | 2 | **Project Milestones** |  | 62.88d | 2021-07-14 | 2021-10-11 |  |  |  | 0d |  |  |  |  |  |
| 5 | 2.1 | M1: Motor Spin | milestone | 0d | 2021-08-02 | 2021-08-02 | 21 |  |  | 49.88d |  |  |  |  |  |
| 6 | 2.2 | Motor Fitted | milestone | 0d | 2021-08-25 | 2021-08-25 | 22 |  |  | 32.88d |  |  |  |  |  |
| 7 | 2.3 | Temporary Battery | milestone | 0d | 2021-08-26 | 2021-08-26 | 44 |  |  | 31.88d |  |  |  |  |  |
| 8 | 2.4 | Battery Design | milestone | 0d | 2021-07-14 | 2021-07-14 | 35 |  |  | 62.88d |  |  |  |  |  |
| 9 | 2.5 | Auxiliary Equipment | milestone | 0d | 2021-08-30 | 2021-08-30 | 48 |  |  | 29.88d |  |  |  |  |  |
| 10 | 2.6 | Charging System | milestone | 0d | 2021-07-16 | 2021-07-16 | 57 |  |  | 60.88d |  |  |  |  |  |
| 11 | 2.7 | Functional Battery Pack | milestone | 0d | 2021-10-05 | 2021-10-05 | 62 |  |  | 3.88d |  |  |  |  |  |
| 12 | 2.8 | Engineering Approval | milestone | 0d | 2021-10-06 | 2021-10-06 | 69 |  |  | 2.88d |  |  |  |  |  |
| 13 | 2.9 | Registered Vehicle | milestone | 0d | 2021-10-11 | 2021-10-11 | 72 |  |  | 0d |  |  |  |  |  |
| 14 | 4 | **Motor Spinning Prep** |  | 30d | 2021-06-22 A | 2021-08-02 |  | 74% | 7.89d | 49.88d |  |  |  | 152h | 112h |
| 15 | 4.1 | Bench PSU (340v) |  | 14d | 2021-06-22 A | 2021-07-09 A |  | 100% |  |  |  |  | Peter | 112h | 112h |
| 16 | 4.2 | VCU setup |  | 1d | 2021-08-02 | 2021-08-02 | 3 |  |  | 49.88d |  |  | George | 8h |  |
| 17 | 4.3 | 12v PSU setup | milestone | 0d | 2021-06-22 A | 2021-06-22 A |  | 100% |  |  |  |  | George |  |  |
| 18 | 4.4 | Bench and location |  | 1d | 2021-06-22 | 2021-06-22 |  |  |  | 78.88d |  |  | George | 8h |  |
| 19 | 4.5 | Remove existing Controller |  | 1d | 2021-08-02 | 2021-08-02 | 2 |  |  | 49.88d |  |  | George | 4h |  |
| 20 | 4.6 | Coolant Pump setup |  | 1d | 2021-08-02 | 2021-08-02 | 2, 17 |  |  | 49.88d |  |  | George | 4h |  |
| 21 | 5 | Motor Spin Assemble and Test |  | 1d | 2021-08-02 | 2021-08-02 | 2, 3 |  |  | 45.88d | 0d |  | George; Peter | 16h |  |
| 22 | 6 | **Fit Motor** |  | 47d? | 2021-06-22 A | 2021-08-25 |  | 3% | 45.41d? | 29.88d | 0d |  |  |  |  |
| 23 | 4.1 | Study relevant legislation |  | 1d | 2021-06-22 | 2021-06-22 |  |  |  | 75.88d |  |  |  |  |  |
| 24 | 6.1 | Expore mounting and coupling ideas |  | 5d? | 2021-08-02 | 2021-08-06 | 2 |  |  | 29.88d | 0d |  |  |  |  |
| 25 | 6.5 | Design coupling and mounts |  | 5d? | 2021-08-09 | 2021-08-13 | 24 |  |  | 29.88d | 0d |  |  |  |  |
| 26 | 6.2 | Fabricate components |  | 5d? | 2021-08-16 | 2021-08-20 | 25 |  |  | 29.88d | 0d |  |  |  |  |
| 27 | 4.5 | Design weight distribution measurement rig |  | 2d? | 2021-06-22 A | 2021-06-23 |  | 50% | 1d? | 2d | 0d |  |  |  |  |
| 28 | 4.6 | Build weight distribution measurment rig |  | 1d? | 2021-06-24 | 2021-06-24 | 27 |  |  | 2d | 0d |  |  |  |  |
| 29 | 4.7 | Measure weight distribution |  | 1d? | 2021-06-25 | 2021-06-25 | 28 |  |  | 2d |  |  |  |  |  |
| 30 | 4.8 | Remove ICE components |  | 5d? | 2021-06-30 | 2021-07-07 | 29 |  |  | 0d |  | as late as possible |  |  |  |
| 31 | 4.9 | Measure weight distribution with no components |  | 0.5d? | 2021-07-07 | 2021-07-07 | 30 |  |  | 0d |  |  |  |  |  |
| 32 | 6.3 | Mount the motor |  | 2d | 2021-08-23 | 2021-08-24 | 26, 31 |  |  | 29.88d | 0d |  |  |  |  |
| 33 | 6.4 | Test in place |  | 1d | 2021-08-25 | 2021-08-25 | 32, 21 |  |  | 29.88d |  |  |  |  |  |
| 34 | 4.12 | Re-measure weight distribution |  | 1d? | 2021-08-25 | 2021-08-25 | 32 |  |  | 29.88d |  |  |  |  |  |

| ID | WBS | Task | Duration | Start | Finish | Predecessors | Total slack | Free slack | Resources | Work |
| --- | --- | --- | --- | --- | --- | --- | --- | --- | --- | --- |
| 35 | 7 | **Design Battery** | 17d? | 2021-06-22 | 2021-07-14 |  | 0d |  |  |  |
| 36 | 5.1 | Choose cell chemistry and format | 5d? | 2021-06-22 | 2021-06-28 |  | 0d |  |  |  |
| 37 | 7.1 | Design mechanical structure | 5d? | 2021-06-22 | 2021-06-28 |  | 12d |  |  |  |
| 38 | 7.2 | Design physical distribution | 5d? | 2021-07-08 | 2021-07-14 | 31 | 0d |  |  |  |
| 39 | 7.3 | **Design Battery Cooling** | 12d? | 2021-06-29 | 2021-07-14 |  | 0d |  |  |  |
| 40 | 7.3.1 | Initial Designs | 1d | 2021-06-29 | 2021-06-29 | 36 | 0d |  |  |  |
| 41 | 7.3.2 | Modelling | 5d? | 2021-06-30 | 2021-07-06 | 40 | 0d |  |  |  |
| 42 | 7.3.3 | Model evaluation | 1d? | 2021-07-07 | 2021-07-07 | 41 | 0d |  |  |  |
| 43 | 7.3.4 | Iteration | 5d? | 2021-07-08 | 2021-07-14 | 42 | 0d |  |  |  |
| 44 | 8 | **Make Temporary Battery** | 43d? | 2021-06-29 | 2021-08-26 |  | 29.88d | 0d |  | 80h |
| 45 | 8.1 | Procure cells | 10d? | 2021-06-29 | 2021-07-12 | 36 | 56.88d | 0d | External | 80h |
| 46 | 6.2 | Fabricate temporary battery | 5d? | 2021-07-13 | 2021-07-19 | 45 | 56.88d | 27d |  |  |
| 47 | 6.3 | Connect battery to inverter | 1d? | 2021-08-26 | 2021-08-26 | 22, 46 | 29.88d |  |  |  |
| 48 | 9 | **Construct and Mount Aux Equipment** | 50d? | 2021-06-22 | 2021-08-30 |  | 29.88d | 0d |  | 240h |
| 49 | 9.2 | **12V System** | 49d? | 2021-06-22 | 2021-08-27 |  | 29.88d | 0d |  | 120h |
| 50 | 9.2.1 | Explore DC/DC charger options | 2d? | 2021-06-22 | 2021-06-23 |  | 60.88d | 0d |  |  |
| 51 | 7.1.2 | Procure DC/DC charger | 15d? | 2021-06-24 | 2021-07-14 | 50 | 60.88d | 31d | External | 120h |
| 52 | 7.1.3 | Install DC/DC charger | 1d? | 2021-08-27 | 2021-08-27 | 44, 51 | 29.88d |  |  |  |
| 53 | 9.1 | **Vacuum System** | 50d? | 2021-06-22 | 2021-08-30 |  | 29.88d |  |  | 120h |
| 54 | 9.1.1 | Explore OEM vacuum brake pump options | 2d? | 2021-06-22 | 2021-06-23 |  | 61.88d | 0d |  |  |
| 55 | 7.2.2 | Procure brake pump | 15d? | 2021-06-24 | 2021-07-14 | 54 | 61.88d | 32d | External | 120h |
| 56 | 7.2.3 | Install brake pump | 1d? | 2021-08-30 | 2021-08-30 | 44, 49, 55 | 29.88d |  |  |  |
| 57 | 10 | **Construct and Install Battery Charger** | 19d? | 2021-06-22 | 2021-07-16 |  | 60.88d | 0d |  | 120h |
| 58 | 10.1 | Source components and materials | 15d? | 2021-06-22 | 2021-07-12 |  | 60.88d | 0d | External | 120h |
| 59 | 10.2 | Build | 2d? | 2021-07-13 | 2021-07-14 | 58 | 60.88d | 0d |  |  |
| 60 | 10.3 | Install | 1d? | 2021-07-15 | 2021-07-15 | 59 | 60.88d | 0d |  |  |
| 61 | 10.4 | Test | 1d? | 2021-07-16 | 2021-07-16 | 60 | 60.88d |  |  |  |

| ID | WBS | Task | Duration | Start | Finish | Predecessors | Total slack | Resources | Work |
| --- | --- | --- | --- | --- | --- | --- | --- | --- | --- |
| 62 | 11 | **Construct and Install Final Battery Pack** | 71d? | 2021-06-29 | 2021-10-05 |  | 0d |  | 240h |
| 63 | 11.1 | Source Components and materials | 30d? | 2021-07-15 | 2021-08-25 | 35 | 0d | External | 240h |
| 64 | 11.2 | Design BMS | 1d? | 2021-06-29 | 2021-06-29 | 36 | 41d |  |  |
| 65 | 11.5 | Build Modules | 20d? | 2021-08-26 | 2021-09-22 | 63, 64 | 0d |  |  |
| 66 | 13.2 | Test Modules | 2d? | 2021-09-23 | 2021-09-24 | 65 | 0d |  |  |
| 67 | 11.3 | Install | 5d? | 2021-09-27 | 2021-10-01 | 66 | 0d |  |  |
| 68 | 11.4 | Final testing | 2d? | 2021-10-04 | 2021-10-05 | 67 | 0d |  |  |
| 69 | 12 | **Get Engineering Approval** | 77d? | 2021-06-22 | 2021-10-06 |  | 0d |  |  |
| 70 | 12.1 | Find a suitable engineer | 1d? | 2021-06-22 | 2021-06-22 |  | 75d |  |  |
| 71 | 10.2 | Present car with evidence of compliance with legislation | 1d? | 2021-10-06 | 2021-10-06 | 68, 70 | 0d |  |  |
| 72 | 13 | **Register the vehicle** | 2.88d | 2021-10-07 | 2021-10-11 | 69 | 0d |  |  |
| 73 | 13.1 | Go over pits | 1d | 2021-10-07 | 2021-10-07 | 69 | 0d |  |  |
| 74 | 11.2 | Get plates from DOT | 1d | 2021-10-08 | 2021-10-08 | 73 | 0d |  |  |
| 75 | 11.3 | Install plates | 0.88d | 2021-10-11 | 2021-10-11 | 74 | 0d |  |  |
